# Proyecto - AIR Web

Schedule from MS Project, 2017-03-06 to 2017-09-11, A marks actual dates.
Pfizer Inc

## Calendars

- Standard: Mon-Fri 08:00-12:00, 13:00-17:00; Sat-Sun off.

## Resources

| Resource |
| --- |
| Laiseca, Mariano |
| Fernandez Guerrero, Leandro |
| Barbeito, Federico |

## Schedule

| ID | WBS | Task | Type | Duration | Start | Finish | Predecessors | Complete | Remaining | Total slack | Free slack | Constraint | Resources | Work | Actual work |
| --- | --- | --- | --- | --- | --- | --- | --- | --- | --- | --- | --- | --- | --- | --- | --- |
| 1 | 1 | **Eventos y Acciones** |  | 85d | 2017-03-06 A | 2017-06-30 |  | 5% | 80.65d | 51d |  |  |  | 3248h | 160h |
| 2 | 1.1 | Relevamiento |  | 20d | 2017-03-06 A | 2017-03-31 A |  | 100% |  |  |  | start no earlier than 2017-03-06 | Laiseca, Mariano | 160h | 160h |
| 3 | 1.2 | **Diseño** |  | 33d | 2017-04-03 | 2017-05-17 | 2 |  |  | 11d | 0d |  |  | 1320h |  |
| 4 | 1.2.1 | **Técnico** |  | 33d | 2017-04-03 | 2017-05-17 |  |  |  | 11d |  |  |  | 528h |  |
| 5 | 1.2.1.1 | **Datos** |  | 33d | 2017-04-03 | 2017-05-17 |  |  |  | 11d |  |  |  | 528h |  |
| 6 | 1.2.1.1.1 | Maestros |  | 33d | 2017-04-03 | 2017-05-17 |  |  |  | 11d | 0d | finish no earlier than 2017-05-17 | Laiseca, Mariano | 264h |  |
| 7 | 1.2.1.1.2 | Transaccionales |  | 33d | 2017-04-03 | 2017-05-17 |  |  |  | 20d |  | finish no earlier than 2017-05-17 | Laiseca, Mariano | 264h |  |
| 8 | 1.2.2 | **Funcional** |  | 33d | 2017-04-03 | 2017-05-17 |  |  |  | 20d |  |  |  | 792h |  |
| 9 | 1.2.2.1 | ABMs Datos maestros |  | 33d | 2017-04-03 | 2017-05-17 |  |  |  | 20d |  |  | Laiseca, Mariano | 264h |  |
| 10 | 1.2.2.2 | Mantenimiento de Eventos |  | 33d | 2017-04-03 | 2017-05-17 |  |  |  | 20d |  |  | Laiseca, Mariano | 264h |  |
| 11 | 1.2.2.3 | Mantenimiento de Acciones |  | 33d | 2017-04-03 | 2017-05-17 |  |  |  | 20d |  |  | Laiseca, Mariano | 264h |  |
| 12 | 1.3 | **Programación** |  | 26d | 2017-05-18 | 2017-06-22 |  |  |  | 0d |  |  |  | 1720h |  |
| 13 | 1.3.1 | **Datos Maestros** |  | 15d | 2017-05-18 | 2017-06-07 | 6 |  |  | 11d |  |  |  | 1560h |  |
| 14 | 1.3.1.1 | Usuarios |  | 10d | 2017-05-18 | 2017-05-31 |  |  |  | 16d |  |  | Barbeito, Federico | 80h |  |
| 15 | 1.3.1.2 | Creación automática de usuarios |  | 10d | 2017-05-18 | 2017-05-31 |  |  |  | 16d |  |  | Barbeito, Federico | 80h |  |
| 16 | 1.3.1.3 | Departamentos |  | 10d | 2017-05-18 | 2017-05-31 |  |  |  | 16d |  |  | Barbeito, Federico | 80h |  |
| 17 | 1.3.1.4 | Areas |  | 15d | 2017-05-18 | 2017-06-07 |  |  |  | 11d |  |  | Barbeito, Federico | 120h |  |
| 18 | 1.3.1.5 | Clases |  | 15d | 2017-05-18 | 2017-06-07 |  |  |  | 11d |  |  | Barbeito, Federico | 120h |  |
| 19 | 1.3.1.6 | Estados |  | 15d | 2017-05-18 | 2017-06-07 |  |  |  | 11d |  |  | Barbeito, Federico | 120h |  |
| 20 | 1.3.1.7 | Grupos de Seguimiento |  | 15d | 2017-05-18 | 2017-06-07 |  |  |  | 11d |  |  | Barbeito, Federico | 120h |  |
| 21 | 1.3.1.8 | Motivos |  | 15d | 2017-05-18 | 2017-06-07 |  |  |  | 11d |  |  | Barbeito, Federico | 120h |  |
| 22 | 1.3.1.9 | **Orígenes** |  | 15d | 2017-05-18 | 2017-06-07 |  |  |  | 11d |  |  | Barbeito, Federico | 240h |  |
| 23 | 1.3.1.9.1 | Tipo de Origen |  | 15d | 2017-05-18 | 2017-06-07 |  |  |  | 11d |  |  | Barbeito, Federico | 120h |  |
| 24 | 1.3.1.10 | Partes del Cuerpo |  | 15d | 2017-05-18 | 2017-06-07 |  |  |  | 11d |  |  | Barbeito, Federico | 120h |  |
| 25 | 1.3.1.11 | Prioridades |  | 15d | 2017-05-18 | 2017-06-07 |  |  |  | 11d |  |  | Barbeito, Federico | 120h |  |
| 26 | 1.3.1.12 | Propósitos |  | 15d | 2017-05-18 | 2017-06-07 |  |  |  | 11d |  |  | Barbeito, Federico | 120h |  |
| 27 | 1.3.1.13 | Tipos de Lesión |  | 15d | 2017-05-18 | 2017-06-07 |  |  |  | 11d |  |  | Barbeito, Federico | 120h |  |
| 28 | 1.3.2 | Eventos |  | 10d | 2017-05-26 | 2017-06-08 |  |  |  | 0d |  | start no earlier than 2017-05-26 | Fernandez Guerrero, Leandro | 80h |  |
| 29 | 1.3.3 | Acciones |  | 10d | 2017-06-09 | 2017-06-22 | 28 |  |  | 0d |  |  | Fernandez Guerrero, Leandro | 80h |  |
| 30 | 1.4 | Pruebas |  | 5d | 2017-06-23 | 2017-06-29 | 14, 16, 29 |  |  | 56d | 0d |  | Laiseca, Mariano | 40h |  |
| 31 | 1.5 | Demo | milestone | 1d | 2017-06-30 | 2017-06-30 | 30 |  |  | 56d |  |  | Laiseca, Mariano | 8h |  |

| ID | WBS | Task | Duration | Start | Finish | Predecessors | Total slack | Free slack | Resources | Work |
| --- | --- | --- | --- | --- | --- | --- | --- | --- | --- | --- |
| 32 | 2 | **Scheduler** | 41d | 2017-05-18 | 2017-07-13 |  | 0d |  |  | 168h |
| 33 | 2.1 | Relevamiento | 1d | 2017-05-18 | 2017-05-18 | 3 | 20d | 0d | Laiseca, Mariano | 8h |
| 34 | 2.2 | Diseño | 5d | 2017-05-19 | 2017-05-25 | 33 | 20d |  | Laiseca, Mariano | 40h |
| 35 | 2.3 | Programación | 15d | 2017-06-23 | 2017-07-13 | 34, 12 | 0d |  | Barbeito, Federico [20%]; Fernandez Guerrero, Leandro | 120h |
| 36 | 3 | **Reportes** | 104d | 2017-03-06 | 2017-07-27 |  | 0d |  |  | 704h |
| 37 | 3.1 | Relevamiento | 1d | 2017-05-18 | 2017-05-18 | 3 | 41d |  | Laiseca, Mariano | 8h |
| 38 | 3.2 | Diseño | 5d | 2017-03-06 | 2017-03-10 |  | 99d |  | Laiseca, Mariano | 40h |
| 39 | 3.3 | **Programación** | 10d | 2017-07-14 | 2017-07-27 | 35 | 0d |  | Barbeito, Federico [20%]; Fernandez Guerrero, Leandro | 656h |
| 40 | 3.3.1 | Eventos | 10d | 2017-07-14 | 2017-07-27 |  | 0d |  | Barbeito, Federico [20%]; Fernandez Guerrero, Leandro [80%] | 80h |
| 41 | 3.3.2 | Eventos Sin Acciones | 10d | 2017-07-14 | 2017-07-27 |  | 0d |  | Barbeito, Federico [20%]; Fernandez Guerrero, Leandro [80%] | 80h |
| 42 | 3.3.3 | Eventos Sin Cerrar | 10d | 2017-07-14 | 2017-07-27 |  | 0d |  | Barbeito, Federico [20%]; Fernandez Guerrero, Leandro [80%] | 80h |
| 43 | 3.3.4 | Eventos con todas las acciones Cerradas | 10d | 2017-07-14 | 2017-07-27 |  | 0d |  | Barbeito, Federico [20%]; Fernandez Guerrero, Leandro [80%] | 80h |
| 44 | 3.3.5 | Mis Eventos | 10d | 2017-07-14 | 2017-07-27 |  | 0d |  | Barbeito, Federico [20%]; Fernandez Guerrero, Leandro [80%] | 80h |
| 45 | 3.3.6 | Acciones | 10d | 2017-07-14 | 2017-07-27 |  | 0d |  | Barbeito, Federico [20%]; Fernandez Guerrero, Leandro [80%] | 80h |
| 46 | 3.3.7 | Mis Acciones Pendientes | 10d | 2017-07-14 | 2017-07-27 |  | 0d |  | Barbeito, Federico [20%]; Fernandez Guerrero, Leandro [80%] | 80h |
| 47 | 4 | **JSA** | 21d | 2017-07-28 | 2017-08-25 | 36, 32 | 0d |  |  | 168h |
| 48 | 4.1 | Relevamiento | 1d | 2017-07-28 | 2017-07-28 | 37 | 0d |  | Laiseca, Mariano | 8h |
| 49 | 4.2 | Diseño | 5d | 2017-07-31 | 2017-08-04 | 48 | 0d |  | Laiseca, Mariano | 40h |
| 50 | 4.3 | Programación | 15d | 2017-08-07 | 2017-08-25 | 49 | 0d |  | Barbeito, Federico [20%]; Fernandez Guerrero, Leandro | 120h |
| 51 | 5 | Pruebas | 10d | 2017-08-28 | 2017-09-08 | 47 | 0d |  | Laiseca, Mariano | 80h |
| 52 | 6 | Migración de Datos | 5d | 2017-08-28 | 2017-09-01 | 47 | 5d |  | Laiseca, Mariano | 40h |
| 53 | 7 | Capacitación | 1d | 2017-08-28 | 2017-08-28 | 47 | 9d |  | Laiseca, Mariano | 8h |
| 54 | 8 | Implementación | 1d | 2017-09-11 | 2017-09-11 | 53, 51, 52 | 0d |  | Laiseca, Mariano | 8h |
